# Задание1

How a schedule from MS Project changed from version to version. A marks actual dates.

## Version 1 (data date 2023-03-26, saved 2023-03-26, file LR4_v3.mpp)

| ID | WBS | Task | Duration | Start | Finish | Predecessors | Complete | Total float | Constraint |
| --- | --- | --- | --- | --- | --- | --- | --- | --- | --- |
| 1 | 1 | **Создание интерфейса** | 79.37d | 2023-03-01 09:00 A | 2023-06-27 11:59 |  | 66% | 0d |  |
| 2 | 1.1 | **Разработка дизайна интерфейса** | 25.62d | 2023-03-01 09:00 A | 2023-04-06 15:00 |  | 79% | 45.76d |  |
| 3 |  | Разработка 2D графических элементов | 3w | 2023-03-01 09:00 A | 2023-03-23 12:00 A |  | 100% |  |  |
| 4 |  | Разработка 3D графических элементов | 2w | 2023-03-01 09:00 A | 2023-03-16 11:00 A | 3SS | 100% |  | finish no earlier than 2023-03-14 18:00 |
| 5 |  | Создание заставки | 3w | 2023-03-16 11:00 A | 2023-04-06 15:00 | 4 | 43% | 45.76d |  |
| 6 |  | Программирование интерфейса | 1.5w | 2023-06-15 16:59 | 2023-06-27 11:59 | 2, 11 |  | 0d |  |
| 7 | 2 | **Построение базы объектов** | 87.85d | 2023-03-22 12:00 A | 2023-07-28 10:47 |  | 3% | 0.03d |  |
| 8 |  | Анализ и построение структуры базы объектов | 2w | 2023-03-22 12:00 A | 2023-04-05 15:00 |  | 25% | 0.03d |  |
| 9 |  | Программирование средств обработки базы объектов | 2.92w | 2023-04-05 15:00 | 2023-05-02 10:47 | 8 |  | 0.03d |  |
| 10 |  | Наполнение базы объектов | 12w | 2023-05-02 10:47 | 2023-07-28 10:47 | 9 |  | 0.03d |  |
| 11 | 3 | **Создание ядра GIS** | 71.87d | 2023-03-01 09:00 A | 2023-06-15 16:59 |  | 25% | 0d |  |
| 12 |  | Анализ и проектирование ядра | 3w | 2023-03-01 09:00 A | 2023-03-23 12:00 A |  | 100% |  |  |
| 13 |  | Создание модели ядра | 2.02w | 2023-03-23 12:00 A | 2023-04-06 12:49 | 12 | 16% | 0d |  |
| 14 |  | Тестирование модели ядра | 1w | 2023-04-06 12:49 | 2023-04-20 09:36 | 13 |  | 0d |  |
| 15 |  | Создание рабочей версии ядра | 7.36w | 2023-04-20 09:36 | 2023-06-15 16:59 | 14 |  | 0d |  |
| 16 |  | Создание мультимедиа – наполнения | 6w | 2023-04-06 15:00 | 2023-05-24 13:00 | 2 |  | 45.76d |  |
| 17 |  | Создание справочной системы | 2w | 2023-07-06 15:59 | 2023-07-20 17:59 | 6 |  | 5.26d |  |
| 18 | 6 | **Создание руководства пользователя** | 17.38d | 2023-06-13 11:59 | 2023-07-06 15:59 | 6FS-10d |  | 0d |  |
| 19 |  | Разработка дизайна руководства | 1w | 2023-06-13 11:59 | 2023-06-20 12:59 |  |  | 0d |  |
| 20 |  | Написание руководства пользователя | 3w | 2023-06-15 11:59 | 2023-07-06 15:59 | 19SS+2d |  | 0d |  |
| 21 | 7 | **Создание web – сайта и поддержка** | 23.62d | 2023-06-15 11:59 | 2023-07-18 17:59 |  |  | 0d |  |
| 22 |  | Разработка структуры сайта | 1d | 2023-06-15 11:59 | 2023-06-16 11:59 | 20SS |  | 0d |  |
| 23 |  | Разработка дизайна сайта | 1.43w | 2023-06-16 11:59 | 2023-06-27 14:59 | 22 |  | 0d |  |
| 24 |  | Наполнение сайта | 3w | 2023-06-27 14:59 | 2023-07-18 17:59 | 23 |  | 0d |  |
| 25 |  | Тестирование сайта | 2.45w | 2023-07-11 17:59 | 2023-07-28 11:02 | 21FS-1w |  | 0d |  |
| 26 |  | Сдача сайта в эксплуатацию | 0w | 2023-07-28 11:02 | 2023-07-28 11:02 | 25 |  | 0d |  |
| 30 | 10 | **Совещание** | 100.12d | 2023-03-01 09:00 A | 2023-07-26 10:00 |  | 18% | 0d |  |
| 31 |  | Совещание 1 | 1h | 2023-03-01 09:00 A | 2023-03-01 10:00 A |  | 100% |  | start no earlier than 2023-03-01 09:00 |
| 32 |  | Совещание 2 | 1h | 2023-03-08 09:00 A | 2023-03-08 10:00 A |  | 100% |  | start no earlier than 2023-03-08 09:00 |
| 33 |  | Совещание 3 | 1h | 2023-03-15 09:00 A | 2023-03-15 10:00 A |  | 100% |  | start no earlier than 2023-03-15 09:00 |
| 34 |  | Совещание 4 | 1h | 2023-03-22 09:00 A | 2023-03-22 10:00 A |  | 100% |  | start no earlier than 2023-03-22 09:00 |
| 35 |  | Совещание 5 | 1h | 2023-03-29 09:00 | 2023-03-29 10:00 |  |  |  | start no earlier than 2023-03-29 09:00 |
| 36 |  | Совещание 6 | 1h | 2023-04-05 09:00 | 2023-04-05 10:00 |  |  |  | start no earlier than 2023-04-05 09:00 |
| 37 |  | Совещание 7 | 1h | 2023-04-12 09:00 | 2023-04-12 10:00 |  |  |  | start no earlier than 2023-04-12 09:00 |
| 38 |  | Совещание 8 | 1h | 2023-04-19 09:00 | 2023-04-19 10:00 |  |  |  | start no earlier than 2023-04-19 09:00 |
| 39 |  | Совещание 9 | 1h | 2023-04-26 09:00 | 2023-04-26 10:00 |  |  |  | start no earlier than 2023-04-26 09:00 |
| 40 |  | Совещание 10 | 1h | 2023-05-03 09:00 | 2023-05-03 10:00 |  |  |  | start no earlier than 2023-05-03 09:00 |
| 41 |  | Совещание 11 | 1h | 2023-05-10 09:00 | 2023-05-10 10:00 |  |  |  | start no earlier than 2023-05-10 09:00 |
| 42 |  | Совещание 12 | 1h | 2023-05-17 09:00 | 2023-05-17 10:00 |  |  |  | start no earlier than 2023-05-17 09:00 |
| 43 |  | Совещание 13 | 1h | 2023-05-24 09:00 | 2023-05-24 10:00 |  |  |  | start no earlier than 2023-05-24 09:00 |
| 44 |  | Совещание 14 | 1h | 2023-05-31 09:00 | 2023-05-31 10:00 |  |  |  | start no earlier than 2023-05-31 09:00 |
| 45 |  | Совещание 15 | 1h | 2023-06-07 09:00 | 2023-06-07 10:00 |  |  |  | start no earlier than 2023-06-07 09:00 |
| 46 |  | Совещание 16 | 1h | 2023-06-14 09:00 | 2023-06-14 10:00 |  |  |  | start no earlier than 2023-06-14 09:00 |
| 47 |  | Совещание 17 | 1h | 2023-06-21 09:00 | 2023-06-21 10:00 |  |  |  | start no earlier than 2023-06-21 09:00 |
| 48 |  | Совещание 18 | 1h | 2023-06-28 09:00 | 2023-06-28 10:00 |  |  |  | start no earlier than 2023-06-28 09:00 |
| 49 |  | Совещание 19 | 1h | 2023-07-05 09:00 | 2023-07-05 10:00 |  |  |  | start no earlier than 2023-07-05 09:00 |
| 50 |  | Совещание 20 | 1h | 2023-07-12 09:00 | 2023-07-12 10:00 |  |  |  | start no earlier than 2023-07-12 09:00 |
| 51 |  | Совещание 21 | 1h | 2023-07-19 09:00 | 2023-07-19 10:00 |  |  |  | start no earlier than 2023-07-19 09:00 |
| 52 |  | Совещание 22 | 1h | 2023-07-26 09:00 | 2023-07-26 10:00 |  |  |  | start no earlier than 2023-07-26 09:00 |

## Version 2 (data date 2023-05-05, saved 2023-03-27, file LR4_v4.mpp)

Last finish 2023-07-28 → 2023-07-31 (+3d). Complete tasks 7 → 17.

Changed:

| ID | Task | Start | Finish | Duration | Complete | Total float | Other |
| --- | --- | --- | --- | --- | --- | --- | --- |
| 1 | **Создание интерфейса** | 2023-03-01 09:00 A → 2023-03-01 10:00 A | 2023-06-27 11:59 → 2023-06-28 14:44 (+1d) | 79.37d → 80.47d | 66% → 75% |  | baseline start 2022-03-01 09:00 → 2023-03-01 10:00; baseline finish 2022-06-27 11:59 → 2023-06-26 15:37 |
| 2 | **Разработка дизайна интерфейса** | 2023-03-01 09:00 A → 2023-03-01 10:00 A |  | 25.62d → 25.5d | 79% → 87% | 45.76d → 0d | baseline start 2022-03-01 09:00 → 2023-03-01 10:00; baseline finish 2022-04-05 15:00 → 2023-04-06 15:00 |
| 3 | Разработка 2D графических элементов | 2023-03-01 09:00 A → 2023-03-01 10:00 A |  |  |  |  | baseline start 2022-03-01 09:00 → 2023-03-01 10:00; baseline finish 2022-03-22 12:00 → 2023-03-23 12:00 |
| 4 | Разработка 3D графических элементов | 2023-03-01 09:00 A → 2023-03-01 10:00 A | 2023-03-16 11:00 A → 2023-03-23 18:00 (+7d) | 2w → 3.15w | 100% → 63% |  | constraint finish no earlier than 2023-03-14 18:00 → finish no earlier than 2023-03-23 18:00; baseline start 2022-03-01 09:00 → 2023-03-01 10:00; baseline finish 2022-03-15 11:00 → 2023-03-16 11:00 |
| 5 | Создание заставки |  | 2023-04-06 15:00 A |  | 43% → 100% | 45.76d → none | baseline start 2022-03-15 11:00 → 2023-03-16 11:00; baseline finish 2022-04-05 15:00 → 2023-04-06 15:00 |
| 6 | Программирование интерфейса | 2023-06-15 16:59 → 2023-06-19 09:44 (+4d) | 2023-06-27 11:59 → 2023-06-28 14:44 (+1d) |  |  |  | baseline start 2022-06-15 16:59 → 2023-06-15 10:37; baseline finish 2022-06-27 11:59 → 2023-06-26 15:37 |
| 7 | **Построение базы объектов** | 2023-03-22 12:00 A → 2023-03-01 09:00 A (-21d) | 2023-07-28 10:47 → 2023-07-17 15:09 (-11d) | 87.85d → 93.64d | 3% → 38% | 0.03d → 9.83d | baseline start 2022-03-22 12:00 → 2023-03-01 09:00; baseline finish 2022-07-29 10:47 → 2023-07-17 15:09 |
| 8 | Анализ и построение структуры базы объектов | 2023-03-22 12:00 A → 2023-03-01 09:00 A (-21d) | 2023-04-05 15:00 → 2023-03-21 12:40 A (-15d) | 2w → 1.36w | 25% → 100% | 0.03d → none | resources Системный аналитик → Системный аналитик; Программист#1; Программист#2; baseline start 2022-03-22 12:00 → 2023-03-01 09:00; baseline finish 2022-04-05 15:00 → 2023-03-21 12:40 |
| 9 | Программирование средств обработки базы объектов | 2023-04-05 15:00 → 2023-03-21 12:40 A (-15d) | 2023-05-02 10:47 → 2023-04-18 15:09 A (-14d) | 2.92w → 2.1w | 0% → 100% | 0.03d → none | baseline start 2022-04-05 15:00 → 2023-03-21 12:40; baseline finish 2022-04-29 10:47 → 2023-04-18 15:09 |
| 10 | Наполнение базы объектов | 2023-05-02 10:47 → 2023-04-18 15:09 A (-14d) | 2023-07-28 10:47 → 2023-07-17 15:09 (-11d) |  | 0% → 21% | 0.03d → 9.83d | baseline start 2022-04-29 10:47 → 2023-04-18 15:09; baseline finish 2022-07-29 10:47 → 2023-07-17 15:09 |
| 11 | **Создание ядра GIS** |  | 2023-06-15 16:59 → 2023-06-19 09:44 (+4d) | 71.87d → 73.09d | 25% → 53% |  | baseline start 2022-03-01 09:00 → 2023-03-01 09:00; baseline finish 2022-06-15 16:59 → 2023-06-15 10:37 |
| 12 | Анализ и проектирование ядра |  | 2023-03-23 12:00 A → 2023-03-21 14:40 A (-2d) | 3w → 2.08w |  |  | resources Ведущий программист; Системный аналитик → Ведущий программист; Системный аналитик; Программист#1; baseline start 2022-03-01 09:00 → 2023-03-01 09:00; baseline finish 2022-03-22 12:00 → 2023-03-21 14:40 |
| 13 | Создание модели ядра | 2023-03-23 12:00 A → 2023-03-21 14:40 A (-2d) | 2023-04-06 12:49 → 2023-04-07 14:09 A (+1d) | 2.02w → 2.59w | 16% → 100% | 0d → none | baseline start 2022-03-22 12:00 → 2023-03-21 14:40; baseline finish 2022-04-05 12:49 → 2023-04-07 14:09 |
| 14 | Тестирование модели ядра | 2023-04-06 12:49 → 2023-04-21 09:00 A (+15d) | 2023-04-20 09:36 → 2023-05-05 14:47 A (+15d) |  | 0% → 100% | 0d → none | baseline start 2022-04-05 12:49 → 2023-04-14 09:27; baseline finish 2022-04-19 09:36 → 2023-04-27 15:14 |
| 15 | Создание рабочей версии ядра | 2023-04-20 09:36 → 2023-04-27 15:14 A (+7d) | 2023-06-15 16:59 → 2023-06-19 09:44 (+4d) | 7.36w → 6.11w | 0% → 10% | 0d → none | baseline start 2022-04-19 09:36 → 2023-04-27 15:14; baseline finish 2022-06-15 16:59 → 2023-06-15 10:37 |
| 16 | Создание мультимедиа – наполнения | 2023-04-06 15:00 A | 2023-05-24 13:00 → 2023-05-24 12:00 |  | 0% → 66% | 45.76d → 47.1d | baseline start 2022-04-05 15:00 → 2023-04-06 15:00; baseline finish 2022-05-24 13:00 → 2023-05-24 12:00 |
| 17 | Создание справочной системы | 2023-07-06 15:59 → 2023-07-10 09:00 (+4d) | 2023-07-20 17:59 → 2023-07-24 11:00 (+4d) |  |  | 5.26d → 5.22d | baseline start 2022-07-06 15:59 → 2023-07-06 09:37; baseline finish 2022-07-20 17:59 → 2023-07-20 11:37 |
| 18 | **Создание руководства пользователя** | 2023-06-13 11:59 → 2023-06-14 14:44 (+1d) | 2023-07-06 15:59 → 2023-07-07 17:44 (+1d) |  |  |  | baseline start 2022-06-10 11:59 → 2023-06-09 15:37; baseline finish 2022-07-06 15:59 → 2023-07-06 09:37 |
| 19 | Разработка дизайна руководства | 2023-06-13 11:59 → 2023-06-14 14:44 (+1d) | 2023-06-20 12:59 → 2023-06-21 15:44 (+1d) |  |  |  | baseline start 2022-06-10 11:59 → 2023-06-09 15:37; baseline finish 2022-06-20 12:59 → 2023-06-19 16:37 |
| 20 | Написание руководства пользователя | 2023-06-15 11:59 → 2023-06-16 14:44 (+1d) | 2023-07-06 15:59 → 2023-07-07 17:44 (+1d) |  |  |  | baseline start 2022-06-15 11:59 → 2023-06-14 15:37; baseline finish 2022-07-06 15:59 → 2023-07-06 09:37 |
| 21 | **Создание web – сайта и поддержка** | 2023-06-15 11:59 → 2023-06-16 14:44 (+1d) | 2023-07-18 17:59 → 2023-07-20 10:44 (+2d) |  |  |  | baseline start 2022-06-15 11:59 → 2023-06-14 15:37; baseline finish 2022-07-18 17:59 → 2023-07-18 11:37 |
| 22 | Разработка структуры сайта | 2023-06-15 11:59 → 2023-06-16 14:44 (+1d) | 2023-06-16 11:59 → 2023-06-19 14:44 (+3d) |  |  |  | baseline start 2022-06-15 11:59 → 2023-06-14 15:37; baseline finish 2022-06-16 11:59 → 2023-06-15 15:37 |
| 23 | Разработка дизайна сайта | 2023-06-16 11:59 → 2023-06-19 14:44 (+3d) | 2023-06-27 14:59 → 2023-06-28 16:44 (+1d) |  |  |  | baseline start 2022-06-16 11:59 → 2023-06-15 15:37; baseline finish 2022-06-27 14:59 → 2023-06-26 17:37 |
| 24 | Наполнение сайта | 2023-06-27 14:59 → 2023-06-28 16:44 (+1d) | 2023-07-18 17:59 → 2023-07-20 10:44 (+2d) |  |  |  | baseline start 2022-06-27 14:59 → 2023-06-26 17:37; baseline finish 2022-07-18 17:59 → 2023-07-18 11:37 |
| 25 | Тестирование сайта | 2023-07-11 17:59 → 2023-07-13 10:44 (+2d) | 2023-07-28 11:02 → 2023-07-31 12:47 (+3d) |  |  |  | baseline start 2022-07-11 17:59 → 2023-07-11 11:37; baseline finish 2022-07-28 11:02 → 2023-07-27 14:40 |
| 26 | Сдача сайта в эксплуатацию | 2023-07-28 11:02 → 2023-07-31 12:47 (+3d) | 2023-07-28 11:02 → 2023-07-31 12:47 (+3d) |  |  |  | baseline start 2022-07-28 11:02 → 2023-07-27 14:40; baseline finish 2022-07-28 11:02 → 2023-07-27 14:40 |
| 30 | **Совещание** |  |  |  | 18% → 45% |  | baseline start 2022-03-02 09:00 → 2023-03-01 09:00; baseline finish 2022-07-27 10:00 → 2023-07-26 10:00 |
| 31 | Совещание 1 |  |  |  |  |  | baseline start 2022-03-02 09:00 → 2023-03-01 09:00; baseline finish 2022-03-02 10:00 → 2023-03-01 10:00 |
| 32 | Совещание 2 |  |  |  |  |  | baseline start 2022-03-09 09:00 → 2023-03-08 09:00; baseline finish 2022-03-09 10:00 → 2023-03-08 10:00 |
| 33 | Совещание 3 |  |  |  |  |  | baseline start 2022-03-16 09:00 → 2023-03-15 09:00; baseline finish 2022-03-16 10:00 → 2023-03-15 10:00 |
| 34 | Совещание 4 |  |  |  |  |  | baseline start 2022-03-23 09:00 → 2023-03-22 09:00; baseline finish 2022-03-23 10:00 → 2023-03-22 10:00 |
| 35 | Совещание 5 | 2023-03-29 09:00 A | 2023-03-29 10:00 A |  | 0% → 100% |  | baseline start 2022-03-30 09:00 → 2023-03-29 09:00; baseline finish 2022-03-30 10:00 → 2023-03-29 10:00 |
| 36 | Совещание 6 | 2023-04-05 09:00 A | 2023-04-05 10:00 A |  | 0% → 100% |  | baseline start 2022-04-06 09:00 → 2023-04-05 09:00; baseline finish 2022-04-06 10:00 → 2023-04-05 10:00 |
| 37 | Совещание 7 | 2023-04-12 09:00 A | 2023-04-12 10:00 A |  | 0% → 100% |  | baseline start 2022-04-13 09:00 → 2023-04-12 09:00; baseline finish 2022-04-13 10:00 → 2023-04-12 10:00 |
| 38 | Совещание 8 | 2023-04-19 09:00 A | 2023-04-19 10:00 A |  | 0% → 100% |  | baseline start 2022-04-20 09:00 → 2023-04-19 09:00; baseline finish 2022-04-20 10:00 → 2023-04-19 10:00 |
| 39 | Совещание 9 | 2023-04-26 09:00 A | 2023-04-26 10:00 A |  | 0% → 100% |  | resources 3Д аниматор; Web-дизайнер; Ведущий программист; Мультимедиакорреспондент; Системный аналитик; Технический писатель; Художник-дизайнер → Ведущий программист; Мультимедиакорреспондент; baseline start 2022-04-27 09:00 → 2023-04-26 09:00; baseline finish 2022-04-27 10:00 → 2023-04-26 10:00 |
| 40 | Совещание 10 | 2023-05-03 09:00 A | 2023-05-03 10:00 A |  | 0% → 100% |  | resources 3Д аниматор; Web-дизайнер; Ведущий программист; Мультимедиакорреспондент; Системный аналитик; Технический писатель; Художник-дизайнер → Ведущий программист; Мультимедиакорреспондент; baseline start 2022-05-04 09:00 → 2023-05-03 09:00; baseline finish 2022-05-04 10:00 → 2023-05-03 10:00 |
| 41 | Совещание 11 |  |  |  |  |  | resources 3Д аниматор; Web-дизайнер; Ведущий программист; Мультимедиакорреспондент; Системный аналитик; Технический писатель; Художник-дизайнер → Ведущий программист; Мультимедиакорреспондент; baseline start 2022-05-11 09:00 → 2023-05-10 09:00; baseline finish 2022-05-11 10:00 → 2023-05-10 10:00 |
| 42 | Совещание 12 |  |  |  |  |  | resources 3Д аниматор; Web-дизайнер; Ведущий программист; Мультимедиакорреспондент; Системный аналитик; Технический писатель; Художник-дизайнер → Ведущий программист; Мультимедиакорреспондент; baseline start 2022-05-18 09:00 → 2023-05-17 09:00; baseline finish 2022-05-18 10:00 → 2023-05-17 10:00 |
| 43 | Совещание 13 |  |  |  |  |  | resources 3Д аниматор; Web-дизайнер; Ведущий программист; Мультимедиакорреспондент; Системный аналитик; Технический писатель; Художник-дизайнер → Ведущий программист; Мультимедиакорреспондент; baseline start 2022-05-25 09:00 → 2023-05-24 09:00; baseline finish 2022-05-25 10:00 → 2023-05-24 10:00 |
| 44 | Совещание 14 |  |  |  |  |  | resources 3Д аниматор; Web-дизайнер; Ведущий программист; Мультимедиакорреспондент; Системный аналитик; Технический писатель; Художник-дизайнер → Ведущий программист; baseline start 2022-06-01 09:00 → 2023-05-31 09:00; baseline finish 2022-06-01 10:00 → 2023-05-31 10:00 |
| 45 | Совещание 15 |  |  |  |  |  | resources 3Д аниматор; Web-дизайнер; Ведущий программист; Мультимедиакорреспондент; Системный аналитик; Технический писатель; Художник-дизайнер → Ведущий программист; baseline start 2022-06-08 09:00 → 2023-06-07 09:00; baseline finish 2022-06-08 10:00 → 2023-06-07 10:00 |
| 46 | Совещание 16 |  |  |  |  |  | resources 3Д аниматор; Web-дизайнер; Ведущий программист; Мультимедиакорреспондент; Системный аналитик; Технический писатель; Художник-дизайнер → 3Д аниматор; Web-дизайнер; Ведущий программист; Технический писатель; Художник-дизайнер; baseline start 2022-06-15 09:00 → 2023-06-14 09:00; baseline finish 2022-06-15 10:00 → 2023-06-14 10:00 |
| 47 | Совещание 17 |  |  |  |  |  | resources 3Д аниматор; Web-дизайнер; Ведущий программист; Мультимедиакорреспондент; Системный аналитик; Технический писатель; Художник-дизайнер → 3Д аниматор; Web-дизайнер; Технический писатель; Художник-дизайнер; baseline start 2022-06-22 09:00 → 2023-06-21 09:00; baseline finish 2022-06-22 10:00 → 2023-06-21 10:00 |
| 48 | Совещание 18 |  |  |  |  |  | resources 3Д аниматор; Web-дизайнер; Ведущий программист; Мультимедиакорреспондент; Системный аналитик; Технический писатель; Художник-дизайнер → Web-дизайнер; Технический писатель; Художник-дизайнер; baseline start 2022-06-29 09:00 → 2023-06-28 09:00; baseline finish 2022-06-29 10:00 → 2023-06-28 10:00 |
| 49 | Совещание 19 |  |  |  |  |  | resources 3Д аниматор; Web-дизайнер; Ведущий программист; Мультимедиакорреспондент; Системный аналитик; Технический писатель; Художник-дизайнер → Web-дизайнер; Технический писатель; baseline start 2022-07-06 09:00 → 2023-07-05 09:00; baseline finish 2022-07-06 10:00 → 2023-07-05 10:00 |
| 50 | Совещание 20 |  |  |  |  |  | resources 3Д аниматор; Web-дизайнер; Ведущий программист; Мультимедиакорреспондент; Системный аналитик; Технический писатель; Художник-дизайнер → Web-дизайнер; Ведущий программист; Технический писатель; baseline start 2022-07-13 09:00 → 2023-07-12 09:00; baseline finish 2022-07-13 10:00 → 2023-07-12 10:00 |
| 51 | Совещание 21 |  |  |  |  |  | resources 3Д аниматор; Web-дизайнер; Ведущий программист; Мультимедиакорреспондент; Системный аналитик; Технический писатель; Художник-дизайнер → Web-дизайнер; Ведущий программист; Технический писатель; baseline start 2022-07-20 09:00 → 2023-07-19 09:00; baseline finish 2022-07-20 10:00 → 2023-07-19 10:00 |
| 52 | Совещание 22 |  |  |  |  |  | resources 3Д аниматор; Web-дизайнер; Ведущий программист; Мультимедиакорреспондент; Системный аналитик; Технический писатель; Художник-дизайнер → Ведущий программист; baseline start 2022-07-27 09:00 → 2023-07-26 09:00; baseline finish 2022-07-27 10:00 → 2023-07-26 10:00 |
